# Part2

Schedule from MS Project, 2019-07-01 to 2020-07-20, costs in $.

## Calendars

- Standard: Mon-Fri 08:00-12:00, 13:00-17:00; Sat-Sun off. Exceptions (off unless hours are given): 2019-07-04 (Independence day), 2019-09-02 (Labor Day), 2019-11-28 (Thanksgiving Day), 2019-12-25 to 2019-12-26 (Xmas), 2020-01-01 (New year), 2020-05-25 (Memorial Day).

## Resources

| Resource | Rate |
| --- | --- |
| Design | 80 |
| Development | 60 |
| Assembly/test | 70 |
| Procurement | 40 |

## Schedule

| ID | WBS | Task | Duration | Start | Finish | Predecessors | Total slack | Free slack | Resources | Work | Cost |
| --- | --- | --- | --- | --- | --- | --- | --- | --- | --- | --- | --- |
| 1 | 1 | **Nightingale Project A** | 269d | 2019-07-01 | 2020-07-20 |  | 0d |  |  | 2960h | 199,120 |
| 2 | 1.1 | Architectural decisions | 10d | 2019-07-01 | 2019-07-15 |  | 0d |  | Design | 80h | 6,400 |
| 3 | 1.2 | Internal specifications | 20d | 2019-08-06 | 2019-09-03 | 2 | 0d |  | Design | 160h | 12,800 |
| 4 | 1.3 | External specifications | 18d | 2019-08-06 | 2019-08-29 | 2 | 2d |  | Design | 144h | 11,520 |
| 5 | 1.4 | Feature specifications | 15d | 2019-07-16 | 2019-08-05 | 2 | 21d | 0d | Design [200%] | 240h | 19,200 |
| 6 | 1.5 | Voice recognition | 15d | 2019-10-02 | 2019-10-22 | 3, 4 | 6d |  | Development [200%] | 240h | 14,400 |
| 7 | 1.6 | Case | 4d | 2019-10-23 | 2019-10-28 | 3, 4 | 2d |  | Development | 32h | 1,920 |
| 8 | 1.7 | Screen | 2d | 2019-10-23 | 2019-10-24 | 3, 4 | 4d |  | Development | 16h | 960 |
| 9 | 1.8 | Speaker output jacks | 2d | 2019-10-25 | 2019-10-28 | 3, 4 | 2d |  | Development | 16h | 960 |
| 10 | 1.9 | Tape mechanism | 2d | 2019-10-29 | 2019-10-30 | 3, 4 | 0d |  | Development | 16h | 960 |
| 11 | 1.10 | Database | 40d | 2019-08-06 | 2019-10-01 | 5 | 21d |  | Development | 320h | 19,200 |
| 12 | 1.11 | Microphone/soundcard | 5d | 2019-08-06 | 2019-08-12 | 5 | 56d |  | Development | 40h | 2,400 |
| 13 | 1.12 | Pager | 4d | 2019-08-20 | 2019-08-23 | 5 | 47d |  | Development | 32h | 1,920 |
| 14 | 1.13 | Barcode reader | 3d | 2019-08-30 | 2019-09-04 | 5 | 40d |  | Development | 24h | 1,440 |
| 15 | 1.14 | Alarm clock | 4d | 2019-08-26 | 2019-08-29 | 5 | 43d |  | Development | 32h | 1,920 |
| 16 | 1.15 | Computer I/O | 5d | 2019-08-13 | 2019-08-19 | 5 | 51d |  | Development | 40h | 2,400 |
| 17 | 1.16 | Review design | 10d | 2019-10-31 | 2019-11-13 | 6, 7, 8, 9, 10, 11, 12, 13, 14, 15, 16 | 0d |  | Design [50%] | 40h | 3,200 |
| 18 | 1.17 | Price components | 5d | 2019-10-31 | 2019-11-06 | 6, 7, 8, 9, 10, 11, 12, 13, 14, 15, 16 | 5d |  | Procurement | 40h | 1,600 |
| 19 | 1.18 | Integration | 15d | 2019-11-14 | 2019-12-05 | 17, 18 | 0d |  | Assembly/test | 120h | 8,400 |
| 20 | 1.19 | Document design | 35d | 2019-11-14 | 2020-01-07 | 17 | 30d |  | Design [50%] | 140h | 11,200 |
| 21 | 1.20 | Procure prototype components | 20d | 2019-12-06 | 2020-01-07 | 19 | 0d |  | Procurement | 160h | 6,400 |
| 22 | 1.21 | Assemble prototypes | 10d | 2020-01-08 | 2020-01-21 | 21 | 0d |  | Assembly/test | 80h | 5,600 |
| 23 | 1.22 | Lab test prototypes | 20d | 2020-01-22 | 2020-02-18 | 22 | 0d |  | Assembly/test | 160h | 11,200 |
| 24 | 1.23 | Field test prototypes | 20d | 2020-02-19 | 2020-03-17 | 20, 23 | 0d |  | Assembly/test | 160h | 11,200 |
| 25 | 1.24 | Adjust design | 20d | 2020-03-18 | 2020-04-14 | 24 | 0d |  | Design [50%] | 80h | 6,400 |
| 26 | 1.25 | Order stock parts | 15d | 2020-04-15 | 2020-05-05 | 25 | 0d |  | Procurement [50%] | 60h | 2,400 |
| 27 | 1.26 | Order custom parts | 2d | 2020-04-15 | 2020-04-16 | 25 | 8d |  | Procurement [50%] | 8h | 320 |
| 28 | 1.27 | Assemble first production unit | 10d | 2020-05-18 | 2020-06-01 | 26FS+8d, 27FS+13d | 0d |  | Assembly/test | 80h | 5,600 |
| 29 | 1.28 | Test unit | 10d | 2020-06-02 | 2020-06-15 | 28 | 0d |  | Assembly/test | 80h | 5,600 |
| 30 | 1.29 | Produce 30 units | 15d | 2020-06-16 | 2020-07-06 | 29 | 0d |  | Assembly/test [200%] | 240h | 16,800 |
| 31 | 1.30 | Train sales representatives | 10d | 2020-07-07 | 2020-07-20 | 30 | 0d |  | Development | 80h | 4,800 |
