# Part2

Schedule from MS Project, 2019-07-01 to 2020-06-19, costs in $.

## Calendars

- Standard: Mon-Fri 08:00-12:00, 13:00-17:00; Sat-Sun off. Exceptions (off unless hours are given): 2019-07-04 (Independence day), 2019-09-02 (Labor Day), 2019-11-28 (Thanksgiving Day), 2019-12-25 to 2019-12-26 (Xmas), 2020-01-01 (New year), 2020-05-25 (Memorial Day).

## Resources

| Resource | Rate |
| --- | --- |
| Design | 80 |
| Development | 60 |
| Assembly/test | 70 |
| Procurement | 40 |

## Schedule

| ID | WBS | Task | Duration | Start | Finish | Predecessors | Baseline start | Baseline finish | Baseline duration | Total slack | Free slack | Resources | Work | Cost | Baseline cost |
| --- | --- | --- | --- | --- | --- | --- | --- | --- | --- | --- | --- | --- | --- | --- | --- |
| 1 | 1 | **Nightingale Project A** | 248d | 2019-07-01 | 2020-06-19 |  | 2019-07-01 | 2020-06-19 | 248d | 0d |  |  | 2960h | 199,120 | 199,120 |
| 2 | 1.1 | Architectural decisions | 10d | 2019-07-01 | 2019-07-15 |  | 2019-07-01 | 2019-07-15 | 10d | 0d |  | Design | 80h | 6,400 | 6,400 |
| 3 | 1.2 | Internal specifications | 20d | 2019-08-06 | 2019-09-03 | 2 | 2019-08-06 | 2019-09-03 | 20d | 5d | 0d | Design | 160h | 12,800 | 12,800 |
| 4 | 1.3 | External specifications | 18d | 2019-08-06 | 2019-08-29 | 2 | 2019-08-06 | 2019-08-29 | 18d | 7d | 2d | Design | 144h | 11,520 | 11,520 |
| 5 | 1.4 | Feature specifications | 15d | 2019-07-16 | 2019-08-05 | 2 | 2019-07-16 | 2019-08-05 | 15d | 0d |  | Design [200%] | 240h | 19,200 | 19,200 |
| 6 | 1.5 | Voice recognition | 15d | 2019-09-04 | 2019-09-24 | 3, 4 | 2019-09-04 | 2019-09-24 | 15d | 5d |  | Development [200%] | 240h | 14,400 | 14,400 |
| 7 | 1.6 | Case | 4d | 2019-09-04 | 2019-09-09 | 3, 4 | 2019-09-04 | 2019-09-09 | 4d | 16d |  | Development | 32h | 1,920 | 1,920 |
| 8 | 1.7 | Screen | 2d | 2019-09-10 | 2019-09-11 | 3, 4 | 2019-09-10 | 2019-09-11 | 2d | 14d |  | Development | 16h | 960 | 960 |
| 9 | 1.8 | Speaker output jacks | 2d | 2019-09-12 | 2019-09-13 | 3, 4 | 2019-09-12 | 2019-09-13 | 2d | 12d |  | Development | 16h | 960 | 960 |
| 10 | 1.9 | Tape mechanism | 2d | 2019-09-16 | 2019-09-17 | 3, 4 | 2019-09-16 | 2019-09-17 | 2d | 10d |  | Development | 16h | 960 | 960 |
| 11 | 1.10 | Database | 40d | 2019-08-06 | 2019-10-01 | 5 | 2019-08-06 | 2019-10-01 | 40d | 0d |  | Development | 320h | 19,200 | 19,200 |
| 12 | 1.11 | Microphone/soundcard | 5d | 2019-08-06 | 2019-08-12 | 5 | 2019-08-06 | 2019-08-12 | 5d | 35d |  | Development | 40h | 2,400 | 2,400 |
| 13 | 1.12 | Pager | 4d | 2019-08-06 | 2019-08-09 | 5 | 2019-08-06 | 2019-08-09 | 4d | 36d |  | Development | 32h | 1,920 | 1,920 |
| 14 | 1.13 | Barcode reader | 3d | 2019-08-13 | 2019-08-15 | 5 | 2019-08-13 | 2019-08-15 | 3d | 32d |  | Development | 24h | 1,440 | 1,440 |
| 15 | 1.14 | Alarm clock | 4d | 2019-08-12 | 2019-08-15 | 5 | 2019-08-12 | 2019-08-15 | 4d | 32d |  | Development | 32h | 1,920 | 1,920 |
| 16 | 1.15 | Computer I/O | 5d | 2019-08-06 | 2019-08-12 | 5 | 2019-08-06 | 2019-08-12 | 5d | 35d |  | Development | 40h | 2,400 | 2,400 |
| 17 | 1.16 | Review design | 10d | 2019-10-02 | 2019-10-15 | 6, 7, 8, 9, 10, 11, 12, 13, 14, 15, 16 | 2019-10-02 | 2019-10-15 | 10d | 0d |  | Design [50%] | 40h | 3,200 | 3,200 |
| 18 | 1.17 | Price components | 5d | 2019-10-02 | 2019-10-08 | 6, 7, 8, 9, 10, 11, 12, 13, 14, 15, 16 | 2019-10-02 | 2019-10-08 | 5d | 5d |  | Procurement | 40h | 1,600 | 1,600 |
| 19 | 1.18 | Integration | 15d | 2019-10-16 | 2019-11-05 | 17, 18 | 2019-10-16 | 2019-11-05 | 15d | 0d |  | Assembly/test | 120h | 8,400 | 8,400 |
| 20 | 1.19 | Document design | 35d | 2019-10-16 | 2019-12-04 | 17 | 2019-10-16 | 2019-12-04 | 35d | 30d |  | Design [50%] | 140h | 11,200 | 11,200 |
| 21 | 1.20 | Procure prototype components | 20d | 2019-11-06 | 2019-12-04 | 19 | 2019-11-06 | 2019-12-04 | 20d | 0d |  | Procurement | 160h | 6,400 | 6,400 |
| 22 | 1.21 | Assemble prototypes | 10d | 2019-12-05 | 2019-12-18 | 21 | 2019-12-05 | 2019-12-18 | 10d | 0d |  | Assembly/test | 80h | 5,600 | 5,600 |
| 23 | 1.22 | Lab test prototypes | 20d | 2019-12-19 | 2020-01-20 | 22 | 2019-12-19 | 2020-01-20 | 20d | 0d |  | Assembly/test | 160h | 11,200 | 11,200 |
| 24 | 1.23 | Field test prototypes | 20d | 2020-01-21 | 2020-02-17 | 20, 23 | 2020-01-21 | 2020-02-17 | 20d | 0d |  | Assembly/test | 160h | 11,200 | 11,200 |
| 25 | 1.24 | Adjust design | 20d | 2020-02-18 | 2020-03-16 | 24 | 2020-02-18 | 2020-03-16 | 20d | 0d |  | Design [50%] | 80h | 6,400 | 6,400 |
| 26 | 1.25 | Order stock parts | 15d | 2020-03-17 | 2020-04-06 | 25 | 2020-03-17 | 2020-04-06 | 15d | 0d |  | Procurement [50%] | 60h | 2,400 | 2,400 |
| 27 | 1.26 | Order custom parts | 2d | 2020-03-17 | 2020-03-18 | 25 | 2020-03-17 | 2020-03-18 | 2d | 8d |  | Procurement [50%] | 8h | 320 | 320 |
| 28 | 1.27 | Assemble first production unit | 10d | 2020-04-17 | 2020-04-30 | 26FS+8d, 27FS+13d | 2020-04-17 | 2020-04-30 | 10d | 0d |  | Assembly/test | 80h | 5,600 | 5,600 |
| 29 | 1.28 | Test unit | 10d | 2020-05-01 | 2020-05-14 | 28 | 2020-05-01 | 2020-05-14 | 10d | 0d |  | Assembly/test | 80h | 5,600 | 5,600 |
| 30 | 1.29 | Produce 30 units | 15d | 2020-05-15 | 2020-06-05 | 29 | 2020-05-15 | 2020-06-05 | 15d | 0d |  | Assembly/test [200%] | 240h | 16,800 | 16,800 |
| 31 | 1.30 | Train sales representatives | 10d | 2020-06-08 | 2020-06-19 | 30 | 2020-06-08 | 2020-06-19 | 10d | 0d |  | Development | 80h | 4,800 | 4,800 |
