# Part2

Schedule from MS Project, 2019-07-01 to 2020-06-24, status date 2019-08-30, costs in $, A marks actual dates.

## Calendars

- Standard: Mon-Fri 08:00-12:00, 13:00-17:00; Sat-Sun off. Exceptions (off unless hours are given): 2019-07-04 (Independence day), 2019-09-02 (Labor Day), 2019-11-28 (Thanksgiving Day), 2019-12-25 to 2019-12-26 (Xmas), 2020-01-01 (New year), 2020-05-25 (Memorial Day).

## Resources

| Resource | Rate |
| --- | --- |
| Design | 80 |
| Development | 60 |
| Assembly/test | 70 |
| Procurement | 40 |

## Schedule

| ID | WBS | Task | Duration | Start | Finish | Predecessors | Complete | Remaining | Baseline start | Baseline finish | Baseline duration | Total slack | Free slack | Resources | Work | Actual work | Cost | Baseline cost | Actual cost |
| --- | --- | --- | --- | --- | --- | --- | --- | --- | --- | --- | --- | --- | --- | --- | --- | --- | --- | --- | --- |
| 1 | 1 | **Nightingale Project A** | 251d | 2019-07-01 A | 2020-06-24 |  | 28% | 179.74d | 2019-07-01 | 2020-06-19 | 248d | 0d |  |  | 3136h | 1018.4h | 210,640 | 199,120 | 73,632 |
| 2 | 1.1 | Architectural decisions | 10d | 2019-07-01 A | 2019-07-15 A |  | 100% |  | 2019-07-01 | 2019-07-15 | 10d |  |  | Design | 80h | 80h | 6,400 | 6,400 | 6,400 |
| 3 | 1.2 | Internal specifications | 20d | 2019-08-09 A | 2019-09-06 | 2 | 85% | 3d | 2019-08-06 | 2019-09-03 | 20d | 5d | 0d | Design | 160h | 136h | 12,800 | 12,800 | 10,880 |
| 4 | 1.3 | External specifications | 18d | 2019-08-09 A | 2019-09-04 | 2 | 85% | 2.7d | 2019-08-06 | 2019-08-29 | 18d | 7d | 2d | Design | 144h | 122.4h | 11,520 | 11,520 | 9,792 |
| 5 | 1.4 | Feature specifications | 18d | 2019-07-16 A | 2019-08-08 A | 2 | 100% |  | 2019-07-16 | 2019-08-05 | 15d |  |  | Design [200%] | 288h | 288h | 23,040 | 19,200 | 23,040 |
| 6 | 1.5 | Voice recognition | 15d | 2019-09-09 | 2019-09-27 | 3, 4 |  |  | 2019-09-04 | 2019-09-24 | 15d | 5d |  | Development [200%] | 240h |  | 14,400 | 14,400 |  |
| 7 | 1.6 | Case | 4d | 2019-09-09 | 2019-09-12 | 3, 4 |  |  | 2019-09-04 | 2019-09-09 | 4d | 16d |  | Development | 32h |  | 1,920 | 1,920 |  |
| 8 | 1.7 | Screen | 2d | 2019-09-16 | 2019-09-17 | 3, 4 |  |  | 2019-09-10 | 2019-09-11 | 2d | 13d |  | Development | 16h |  | 960 | 960 |  |
| 9 | 1.8 | Speaker output jacks | 2d | 2019-09-17 | 2019-09-18 | 3, 4 |  |  | 2019-09-12 | 2019-09-13 | 2d | 12d |  | Development | 16h |  | 960 | 960 |  |
| 10 | 1.9 | Tape mechanism | 2d | 2019-09-23 | 2019-09-24 | 3, 4 |  |  | 2019-09-16 | 2019-09-17 | 2d | 8d |  | Development | 16h |  | 960 | 960 |  |
| 11 | 1.10 | Database | 40d | 2019-08-09 A | 2019-10-04 | 5 | 30% | 28d | 2019-08-06 | 2019-10-01 | 40d | 0d |  | Development | 320h | 96h | 19,200 | 19,200 | 5,760 |
| 12 | 1.11 | Microphone/soundcard | 5d | 2019-08-09 A | 2019-08-15 A | 5 | 100% |  | 2019-08-06 | 2019-08-12 | 5d |  |  | Development | 40h | 40h | 2,400 | 2,400 | 2,400 |
| 13 | 1.12 | Pager | 7d | 2019-08-16 A | 2019-08-26 A | 5 | 100% |  | 2019-08-06 | 2019-08-09 | 4d |  |  | Development | 56h | 56h | 3,360 | 1,920 | 3,360 |
| 14 | 1.13 | Barcode reader | 6d | 2019-08-23 A | 2019-08-30 A | 5 | 100% |  | 2019-08-13 | 2019-08-15 | 3d |  |  | Development | 48h | 48h | 2,880 | 1,440 | 2,880 |
| 15 | 1.14 | Alarm clock | 11d | 2019-08-16 A | 2019-08-30 A | 5 | 100% |  | 2019-08-12 | 2019-08-15 | 4d |  |  | Development | 88h | 88h | 5,280 | 1,920 | 5,280 |
| 16 | 1.15 | Computer I/O | 8d | 2019-08-09 A | 2019-08-20 A | 5 | 100% |  | 2019-08-06 | 2019-08-12 | 5d |  |  | Development | 64h | 64h | 3,840 | 2,400 | 3,840 |
| 17 | 1.16 | Review design | 10d | 2019-10-07 | 2019-10-18 | 6, 7, 8, 9, 10, 11, 12, 13, 14, 15, 16 |  |  | 2019-10-02 | 2019-10-15 | 10d | 0d |  | Design [50%] | 40h |  | 3,200 | 3,200 |  |
| 18 | 1.17 | Price components | 5d | 2019-10-07 | 2019-10-11 | 6, 7, 8, 9, 10, 11, 12, 13, 14, 15, 16 |  |  | 2019-10-02 | 2019-10-08 | 5d | 5d |  | Procurement | 40h |  | 1,600 | 1,600 |  |
| 19 | 1.18 | Integration | 15d | 2019-10-21 | 2019-11-08 | 17, 18 |  |  | 2019-10-16 | 2019-11-05 | 15d | 0d |  | Assembly/test | 120h |  | 8,400 | 8,400 |  |
| 20 | 1.19 | Document design | 35d | 2019-10-21 | 2019-12-09 | 17 |  |  | 2019-10-16 | 2019-12-04 | 35d | 30d |  | Design [50%] | 140h |  | 11,200 | 11,200 |  |
| 21 | 1.20 | Procure prototype components | 20d | 2019-11-11 | 2019-12-09 | 19 |  |  | 2019-11-06 | 2019-12-04 | 20d | 0d |  | Procurement | 160h |  | 6,400 | 6,400 |  |
| 22 | 1.21 | Assemble prototypes | 10d | 2019-12-10 | 2019-12-23 | 21 |  |  | 2019-12-05 | 2019-12-18 | 10d | 0d |  | Assembly/test | 80h |  | 5,600 | 5,600 |  |
| 23 | 1.22 | Lab test prototypes | 20d | 2019-12-24 | 2020-01-23 | 22 |  |  | 2019-12-19 | 2020-01-20 | 20d | 0d |  | Assembly/test | 160h |  | 11,200 | 11,200 |  |
| 24 | 1.23 | Field test prototypes | 20d | 2020-01-24 | 2020-02-20 | 20, 23 |  |  | 2020-01-21 | 2020-02-17 | 20d | 0d |  | Assembly/test | 160h |  | 11,200 | 11,200 |  |
| 25 | 1.24 | Adjust design | 20d | 2020-02-21 | 2020-03-19 | 24 |  |  | 2020-02-18 | 2020-03-16 | 20d | 0d |  | Design [50%] | 80h |  | 6,400 | 6,400 |  |
| 26 | 1.25 | Order stock parts | 15d | 2020-03-20 | 2020-04-09 | 25 |  |  | 2020-03-17 | 2020-04-06 | 15d | 0d |  | Procurement [50%] | 60h |  | 2,400 | 2,400 |  |
| 27 | 1.26 | Order custom parts | 2d | 2020-03-20 | 2020-03-23 | 25 |  |  | 2020-03-17 | 2020-03-18 | 2d | 8d |  | Procurement [50%] | 8h |  | 320 | 320 |  |
| 28 | 1.27 | Assemble first production unit | 10d | 2020-04-22 | 2020-05-05 | 26FS+8d, 27FS+13d |  |  | 2020-04-17 | 2020-04-30 | 10d | 0d |  | Assembly/test | 80h |  | 5,600 | 5,600 |  |
| 29 | 1.28 | Test unit | 10d | 2020-05-06 | 2020-05-19 | 28 |  |  | 2020-05-01 | 2020-05-14 | 10d | 0d |  | Assembly/test | 80h |  | 5,600 | 5,600 |  |
| 30 | 1.29 | Produce 30 units | 15d | 2020-05-20 | 2020-06-10 | 29 |  |  | 2020-05-15 | 2020-06-05 | 15d | 0d |  | Assembly/test [200%] | 240h |  | 16,800 | 16,800 |  |
| 31 | 1.30 | Train sales representatives | 10d | 2020-06-11 | 2020-06-24 | 30 |  |  | 2020-06-08 | 2020-06-19 | 10d | 0d |  | Development | 80h |  | 4,800 | 4,800 |  |
